# National health Campaign

Schedule from MS Project, 2023-02-24 to 2023-03-24, costs in €, A marks actual dates.
Research Programme
ABC Research Ltd.

## Calendars

- Standard: Mon-Fri 08:00-12:00, 13:00-17:00; Sat-Sun off.

## Resources

| Resource | Group | Rate |
| --- | --- | --- |
| Joanne Kelly | Management | 19.23 |
| Riona Carr | Executive | 6.25 |
| Mary Breen | Management | 19.23 |
| Tom Joyce | Office Staff | 6.88 |
| Conf Room | Facilities |  |
| Junior Staff | Office Staff | 3.75 |
| Printing | External |  |

## Schedule

| ID | WBS | Task | Type | Duration | Start | Finish | Predecessors | Complete | Remaining | Baseline start | Baseline finish | Baseline duration | Total slack | Resources | Work | Actual work | Cost | Baseline cost | Actual cost |
| --- | --- | --- | --- | --- | --- | --- | --- | --- | --- | --- | --- | --- | --- | --- | --- | --- | --- | --- | --- |
| 1 | 1 | **National Health** |  | 20d | 2023-02-24 A | 2023-03-24 |  | 15% | 17.05d | 2023-02-24 | 2023-03-24 | 20d | 0d |  | 464h | 56h | 4,394.42 | 4,314.42 | 517.69 |
| 2 | 1.1 | **Survey Setup** |  | 11d | 2023-03-02 A | 2023-03-17 |  | 54% | 5.08d | 2023-03-02 | 2023-03-17 | 11d | 0d |  | 104h | 56h | 567.69 | 487.69 | 517.69 |
| 3 | 1.1.1 | **Planning** |  | 11d | 2023-03-02 A | 2023-03-17 |  | 54% | 5.08d | 2023-03-02 | 2023-03-17 | 11d | 0d |  | 104h | 56h | 567.69 | 487.69 | 517.69 |
| 4 | 1.1.1.1 | Design Questionnaire | manual | 2d | 2023-03-02 A | 2023-03-03 A |  | 100% |  | 2023-03-02 | 2023-03-03 | 2d |  | Joanne Kelly | 16h | 16h | 307.69 | 307.69 | 307.69 |
| 5 | 1.1.1.2 | Type Questionnaire | manual | 2d | 2023-03-06 A | 2023-03-07 A | 4 | 100% |  | 2023-03-06 | 2023-03-06 | 1d |  | Junior Staff | 16h | 16h | 60 | 30 | 60 |
| 6 | 1.1.1.3 | Print Questionnaire | manual | 1w | 2023-03-07 | 2023-03-13 | 5 |  |  | 2023-03-07 | 2023-03-13 | 1w |  | Printing | 40h |  |  |  |  |
| 7 | 1.1.1.4 | Invite interviewers to brief meeting | manual | 4d | 2023-03-07 A | 2023-03-10 | 6SS | 75% | 1d | 2023-03-07 | 2023-03-09 | 3d |  | Riona Carr | 32h | 24h | 200 | 150 | 150 |
| 8 | 1.1.1.5 | Survery Planning Complete | milestone, manual | 0d | 2023-03-17 | 2023-03-17 | 4, 7 |  |  | 2023-03-17 | 2023-03-17 | 0d |  |  |  |  |  |  |  |
| 9 | 1.2 | **Briefing Setup** |  | 7.5d | 2023-03-06 | 2023-03-16 | 2 |  |  | 2023-03-06 | 2023-03-16 | 7.5d | 0d |  | 84h |  | 472.5 | 472.5 |  |
| 10 | 1.2.1 | Book conference room for brief meeting | manual | 4h | 2023-03-14 | 2023-03-14 | 6 |  |  | 2023-03-14 | 2023-03-14 | 4h |  | Tom Joyce | 4h |  | 27.5 | 27.5 |  |
| 11 | 1.2.2 | Contact interviewing locations | manual | 2d | 2023-03-14 | 2023-03-15 | 10SS |  |  | 2023-03-14 | 2023-03-15 | 2d |  | Tom Joyce | 16h |  | 110 | 110 |  |
| 12 | 1.2.3 | Prepare rosters | manual | 4d | 2023-03-06 | 2023-03-10 | 11 |  |  | 2023-03-06 | 2023-03-10 | 4d |  | Tom Joyce | 32h |  | 220 | 220 |  |
| 13 | 1.2.4 | Prepapre packs for each interviewer | manual | 3d | 2023-03-10 | 2023-03-15 | 12 |  |  | 2023-03-10 | 2023-03-15 | 3d |  | Junior Staff | 24h |  | 90 | 90 |  |
| 14 | 1.2.5 | Briefing meeting with interveiwers | manual | 4h | 2023-03-15 | 2023-03-15 | 13 |  |  | 2023-03-15 | 2023-03-15 | 4h |  | Conf Room; Riona Carr | 8h |  | 25 | 25 |  |
| 15 | 1.2.6 | Interviewers briefing complete | milestone, manual | 0d | 2023-03-16 | 2023-03-16 | 14 |  |  | 2023-03-16 | 2023-03-16 | 0d |  |  |  |  |  |  |  |
| 16 | 1.3 | **Data Processing** |  | 20d | 2023-02-24 | 2023-03-24 | 9 |  |  | 2023-02-24 | 2023-03-24 | 20d | 0d |  | 148h |  | 892.69 | 892.69 |  |
| 17 | 1.3.1 | Prepare Book-in forms | manual | 2d | 2023-03-02 | 2023-03-03 |  |  |  | 2023-03-02 | 2023-03-03 | 2d |  | Riona Carr | 16h |  | 100 | 100 |  |
| 18 | 1.3.2 | Check questionnaires | manual | 2d | 2023-03-06 | 2023-03-07 | 17 |  |  | 2023-03-06 | 2023-03-07 | 2d |  | Junior Staff | 16h |  | 60 | 60 |  |
| 19 | 1.3.3 | Code questionnaires | manual | 1.5w | 2023-02-24 | 2023-03-07 | 18FF |  |  | 2023-02-24 | 2023-03-07 | 1.5w |  | Junior Staff | 60h |  | 225 | 225 |  |
| 20 | 1.3.4 | Input data in computer | manual | 3d | 2023-03-13 | 2023-03-15 | 19FS+3d |  |  | 2023-03-13 | 2023-03-15 | 3d |  | Junior Staff | 24h |  | 90 | 90 |  |
| 21 | 1.3.5 | Analyse the data | manual | 2d | 2023-03-22 | 2023-03-24 | 20 |  |  | 2023-03-22 | 2023-03-24 | 2d |  | Joanne Kelly; Tom Joyce | 32h |  | 417.69 | 417.69 |  |
| 22 | 1.3.6 | Data processing complete | milestone, manual | 0d | 2023-03-24 | 2023-03-24 | 21 |  |  | 2023-03-24 | 2023-03-24 | 0d |  |  |  |  |  |  |  |
| 23 | 1.4 | **Interpretation** |  | 8d | 2023-03-02 | 2023-03-14 | 16 |  |  | 2023-03-02 | 2023-03-14 | 8d | 0d |  | 128h |  | 2,461.54 | 2,461.54 |  |
| 24 | 1.4.1 | Prepare presentation | manual | 3d | 2023-03-02 | 2023-03-06 |  |  |  | 2023-03-02 | 2023-03-06 | 3d |  | Joanne Kelly; Mary Breen | 48h |  | 923.08 | 923.08 |  |
| 25 | 1.4.2 | Prepare research report | manual | 1w | 2023-03-07 | 2023-03-13 | 24 |  |  | 2023-03-07 | 2023-03-13 | 1w |  | Joanne Kelly; Mary Breen | 80h |  | 1,538.46 | 1,538.46 |  |
| 26 | 1.4.3 | Project complete | milestone, manual | 0d | 2023-03-14 | 2023-03-14 | 25 |  |  | 2023-03-14 | 2023-03-14 | 0d |  |  |  |  |  |  |  |
